# empatia_gamt_consultores_cronograma

Schedule from MS Project, 2012-05-14 to 2012-08-07, costs in $, A marks actual dates.

## Calendars

- Estándar: Mon-Fri 09:00-13:00, 15:00-19:00; Sat-Sun off. Exceptions (off unless hours are given): 2012-07-16 to 2012-07-27 (Verano).

## Resources

| Resource | Rate |
| --- | --- |
| Jared Bustamante | 50 |
| José Juan Duarte | 50 |
| José Rodolfo Sánchez | 50 |

## Schedule

| ID | WBS | Task | Type | Duration | Start | Finish | Predecessors | Complete | Remaining | Constraint | Resources | Work | Actual work | Cost | Actual cost |
| --- | --- | --- | --- | --- | --- | --- | --- | --- | --- | --- | --- | --- | --- | --- | --- |
| 1 | 1 | **Empatía Gantt Consultores** |  | 46d | 2012-05-14 A | 2012-07-16 |  | 26% | 33.98d |  |  | 975.76h | 288h | 48,788 | 14,399.92 |
| 2 | 1.1 | **INICIACIÓN** |  | 4d | 2012-05-14 A | 2012-05-18 |  | 88% | 0.5d |  |  | 64h | 56h | 3,200 | 2,800 |
| 3 | 1.1.1 | proyecto chárter | manual | 1d | 2012-05-14 | 2012-05-14 |  |  |  | start no earlier than 2012-05-14 | José Juan Duarte | 8h |  | 400 |  |
| 4 | 1.1.2 | registro de stakeholders | manual | 1d | 2012-05-15 A | 2012-05-15 A |  | 100% |  | start no earlier than 2012-05-15 | José Juan Duarte | 8h | 8h | 400 | 400 |
| 5 | 1.1.3 | descripción de la problemática | manual | 2d | 2012-05-15 A | 2012-05-18 A | 3 | 100% |  | finish no earlier than 2012-05-24 | Jared Bustamante; José Rodolfo Sánchez | 16h | 16h | 800 | 800 |
| 6 | 1.1.4 | propósito del proyecto | manual | 2d | 2012-05-16 A | 2012-05-17 A | 3, 5 | 100% |  | finish no earlier than 2012-05-24 | Jared Bustamante; José Rodolfo Sánchez; José Juan Duarte | 16h | 16h | 800 | 800 |
| 7 | 1.1.5 | alcance del proyecto | manual | 1d | 2012-05-17 A | 2012-05-17 A | 6 | 100% |  | finish no earlier than 2012-05-24 | Jared Bustamante | 8h | 8h | 400 | 400 |
| 8 | 1.1.6 | viabilidad | manual | 1d | 2012-05-18 A | 2012-05-18 A | 3, 4, 5, 6, 7 | 100% |  | start no earlier than 2012-05-18 | José Juan Duarte | 8h | 8h | 400 | 400 |
| 9 | 1.2 | **PLANIFICIACIÓN** |  | 10d | 2012-05-15 A | 2012-05-28 |  | 75% | 2.5d |  |  | 120h | 100h | 6,000 | 5,000 |
| 10 | 1.2.1 | Estructura de descomposición de trabajo | manual | 1d | 2012-05-15 A | 2012-05-21 A | 5, 7 | 100% |  |  | Jared Bustamante; José Rodolfo Sánchez | 16h | 16h | 800 | 800 |
| 11 | 1.2.2 | plan de gestión de proyecto | manual | 1d | 2012-05-17 | 2012-05-17 | 3, 4, 7 |  |  | start no earlier than 2012-05-17 | José Rodolfo Sánchez | 8h |  | 400 |  |
| 12 | 1.2.3 | cronograma de proyecto | manual | 1d | 2012-05-18 A | 2012-05-18 A | 10, 11 | 100% |  |  | Jared Bustamante | 8h | 8h | 400 | 400 |
| 13 | 1.2.4 | descripción de roles | manual | 1d | 2012-05-15 A | 2012-05-15 A | 10 | 100% |  |  | José Rodolfo Sánchez | 8h | 8h | 400 | 400 |
| 14 | 1.2.5 | RAM | manual | 1d | 2012-05-16 A | 2012-05-16 A | 10, 13 | 100% |  |  | José Rodolfo Sánchez | 8h | 8h | 400 | 400 |
| 15 | 1.2.6 | evaluación cualitativa y cuantitativa de riesgos | manual | 1d | 2012-05-22 A | 2012-05-22 A |  | 100% |  |  | José Juan Duarte; José Rodolfo Sánchez; Jared Bustamante | 24h | 24h | 1,200 | 1,200 |
| 16 | 1.2.7 | plan de respuesta a riesgos | manual | 1d | 2012-05-23 A | 2012-05-23 A | 15 | 100% |  |  | Jared Bustamante; José Juan Duarte; José Rodolfo Sánchez | 24h | 24h | 1,200 | 1,200 |
| 17 | 1.2.8 | plan de gestión de adquisiciones | manual | 1d | 2012-05-16 | 2012-05-16 | 10 |  |  |  | José Juan Duarte | 8h |  | 400 |  |
| 18 | 1.2.9 | plan de comunicaciones | manual | 1d | 2012-05-28 A | 2012-05-28 | 4 | 50% | 0.5d |  | Jared Bustamante | 8h | 4h | 400 | 200 |
| 19 | 1.2.10 | ruta crítica | manual | 1d | 2012-05-28 A | 2012-05-28 A | 12 | 100% |  |  | José Rodolfo Sánchez | 8h | 8h | 400 | 400 |
| 20 | 1.3 | **EJECUCIÓN** |  | 6d | 2012-05-25 A | 2012-06-01 |  | 50% | 3d |  |  | 40h | 24h | 2,000 | 1,200 |
| 21 | 1.3.1 | informe de performance | manual | 2d | 2012-05-28 | 2012-05-29 |  |  |  |  | José Juan Duarte | 16h |  | 800 |  |
| 22 | 1.3.2 | documento de requerimientos | manual | 2d | 2012-05-25 A | 2012-06-01 A | 27 | 100% |  |  | Jared Bustamante; José Rodolfo Sánchez | 24h | 24h | 1,200 | 1,200 |
| 23 | 1.4 | **CONTROL** |  | 4d | 2012-05-31 A | 2012-06-05 |  | 50% | 2d |  |  | 56h | 16h | 2,800 | 800 |
| 24 | 1.4.1 | diagrama de Gantt | manual | 2d | 2012-05-31 A | 2012-06-01 A | 10 | 100% |  |  | José Juan Duarte | 16h | 16h | 800 | 800 |
| 25 | 1.4.2 | informe de monitoreo de riesgos | manual | 2d | 2012-06-04 | 2012-06-05 |  |  |  |  | Jared Bustamante; José Juan Duarte; José Rodolfo Sánchez | 40h |  | 2,000 |  |

| ID | WBS | Task | Type | Duration | Start | Finish | Predecessors | Complete | Remaining | Actual start | Constraint | Resources | Work | Actual work | Cost | Actual cost |
| --- | --- | --- | --- | --- | --- | --- | --- | --- | --- | --- | --- | --- | --- | --- | --- | --- |
| 26 | 1.5 | **ANÁLISIS Y DISEÑO** |  | 9d | 2012-06-06 A | 2012-06-18 |  | 52% | 4.35d |  |  |  | 136h | 70h | 6,800 | 3,500 |
| 27 | 1.5.1 | **gestión de requerimientos** |  | 3d | 2012-06-06 A | 2012-06-08 |  | 67% | 1d |  |  |  | 40h | 24h | 2,000 | 1,200 |
| 28 | 1.5.1.1 | entrevistas con el cliente | manual | 2d | 2012-06-06 A | 2012-06-07 A |  | 100% |  |  |  | Jared Bustamante; José Rodolfo Sánchez | 24h | 24h | 1,200 | 1,200 |
| 29 | 1.5.1.2 | listado de requerimientos | manual | 1d | 2012-06-08 | 2012-06-08 | 28 |  |  |  |  | Jared Bustamante; José Rodolfo Sánchez | 16h |  | 800 |  |
| 30 | 1.5.2 | **diseño orientado a objetos** |  | 6d | 2012-06-11 | 2012-06-18 |  | 21% | 4.71d | 2012-06-08 |  |  | 56h | 12h | 2,800 | 600 |
| 31 | 1.5.2.1 | diagrama de secuencia | manual | 3d | 2012-06-14 | 2012-06-18 | 29, 33, 32 |  |  |  | start no earlier than 2012-06-13 | José Rodolfo Sánchez [50%]; Jared Bustamante [50%] | 24h |  | 1,200 |  |
| 32 | 1.5.2.2 | diagrama de clases | manual | 2d | 2012-06-12 A | 2012-06-13 | 29, 33 | 75% | 0.5d |  | start no earlier than 2012-06-13 | Jared Bustamante | 16h | 12h | 800 | 600 |
| 33 | 1.5.2.3 | diagrama de caso de usos | manual | 2d | 2012-06-08 | 2012-06-11 | 29 |  |  |  | start no earlier than 2012-06-06 | José Juan Duarte | 16h |  | 800 |  |
| 34 | 1.5.3 | **diseño de datos** |  | 3d | 2012-06-11 A | 2012-06-13 |  | 85% | 0.45d |  |  |  | 40h | 34h | 2,000 | 1,700 |
| 35 | 1.5.3.1 | diagrama entidad-relación | manual | 3d | 2012-06-11 A | 2012-06-13 | 29 | 75% | 0.75d |  | start no earlier than 2012-06-12 | José Rodolfo Sánchez | 24h | 18h | 1,200 | 900 |
| 36 | 1.5.3.2 | modelo relacional | manual | 1d | 2012-06-11 A | 2012-06-11 A |  | 100% |  |  | start no earlier than 2012-06-11 | Jared Bustamante | 8h | 8h | 400 | 400 |
| 37 | 1.5.3.3 | script SQL | manual | 1d | 2012-06-15 A | 2012-06-15 A | 36 | 100% |  |  |  | José Juan Duarte | 8h | 8h | 400 | 400 |
| 38 | 1.6 | **DESARROLLO** |  | 24d | 2012-06-13 | 2012-07-16 | 30, 34 | 4% | 23.06d | 2012-06-12 |  |  | 559.76h | 22h | 27,988 | 1,099.92 |
| 39 | 1.6.1 | **desarrollo de clases** |  | 9d | 2012-06-19 | 2012-06-29 |  |  |  |  |  |  | 136h |  | 6,800 |  |
| 40 | 1.6.1.1 | clase de conexión | manual | 1d | 2012-06-21 | 2012-06-21 |  |  |  |  | start no earlier than 2012-06-20 | Jared Bustamante | 8h |  | 400 |  |
| 41 | 1.6.1.2 | clase_participante | manual | 2d | 2012-06-19 | 2012-06-20 |  |  |  |  | start no earlier than 2012-06-19 | Jared Bustamante | 16h |  | 800 |  |
| 42 | 1.6.1.3 | clase_generaRecomendación | manual | 2d | 2012-06-19 | 2012-06-20 |  |  |  |  | start no earlier than 2012-06-20 | José Rodolfo Sánchez | 16h |  | 800 |  |
| 43 | 1.6.1.4 | clase_servicios | manual | 2d | 2012-06-21 | 2012-06-22 |  |  |  |  | start no earlier than 2012-06-26 | José Rodolfo Sánchez | 16h |  | 800 |  |
| 44 | 1.6.1.5 | clase _asesores | manual | 2d | 2012-06-25 | 2012-06-26 |  |  |  |  | start no earlier than 2012-06-29 | José Rodolfo Sánchez | 16h |  | 800 |  |
| 45 | 1.6.1.6 | clase_alumnos | manual | 2d | 2012-06-27 | 2012-06-28 |  |  |  |  | start no earlier than 2012-07-04 | José Rodolfo Sánchez | 16h |  | 800 |  |
| 46 | 1.6.1.7 | clase_factración | manual | 2d | 2012-06-22 | 2012-06-25 |  |  |  |  | start no earlier than 2012-06-25 | Jared Bustamante | 16h |  | 800 |  |
| 47 | 1.6.1.8 | clase_control_nutrimental | manual | 2d | 2012-06-26 | 2012-06-27 |  |  |  |  | start no earlier than 2012-06-27 | Jared Bustamante | 16h |  | 800 |  |
| 48 | 1.6.1.9 | clase_fechas_importantes | manual | 2d | 2012-06-28 | 2012-06-29 |  |  |  |  | start no earlier than 2012-06-29 | Jared Bustamante | 16h |  | 800 |  |
| 49 | 1.6.2 | **desarrollo GUI** |  | 21d | 2012-06-13 | 2012-07-11 |  | 4% | 20.25d | 2012-06-12 |  |  | 168h | 6h | 8,400 | 299.92 |
| 50 | 1.6.2.1 | pantalla principal | manual | 3d | 2012-06-12 | 2012-06-14 |  |  |  |  | start no earlier than 2012-06-06 | José Juan Duarte | 24h |  | 1,200 |  |
| 51 | 1.6.2.2 | pantalla principal del administrador | manual | 2d | 2012-06-18 A | 2012-06-19 | 50 | 25% | 1.5d |  |  | José Juan Duarte | 16h | 4h | 800 | 200 |
| 52 | 1.6.2.3 | datos de participante | manual | 2d | 2012-06-20 A | 2012-06-21 | 51 | 12% | 1.75d |  |  | José Juan Duarte | 16h | 2h | 800 | 99.92 |
| 53 | 1.6.2.4 | generador de cartas de recomendación | manual | 2d | 2012-06-22 | 2012-06-25 | 52 |  |  |  |  | José Juan Duarte | 16h |  | 800 |  |
| 54 | 1.6.2.5 | catalogo de servicios | manual | 2d | 2012-06-26 | 2012-06-27 | 53 |  |  |  |  | José Juan Duarte | 16h |  | 800 |  |
| 55 | 1.6.2.6 | catálogo de asesores | manual | 2d | 2012-06-28 | 2012-06-29 | 54 |  |  |  | start no earlier than 2012-07-10 | José Juan Duarte | 16h |  | 800 |  |
| 56 | 1.6.2.7 | catalogo de alumnos | manual | 2d | 2012-07-02 | 2012-07-03 | 55 |  |  |  |  | José Juan Duarte | 16h |  | 800 |  |
| 57 | 1.6.2.8 | pantalla de información de facturación | manual | 2d | 2012-07-04 | 2012-07-05 | 56 |  |  |  |  | José Juan Duarte | 16h |  | 800 |  |
| 58 | 1.6.2.9 | control nutrimental del participante | manual | 2d | 2012-07-06 | 2012-07-09 | 57 |  |  |  |  | José Juan Duarte | 16h |  | 800 |  |
| 59 | 1.6.2.10 | listado de fechas importantes | manual | 2d | 2012-07-10 | 2012-07-11 | 58 |  |  |  |  | José Juan Duarte | 16h |  | 800 |  |

| ID | WBS | Task | Type | Duration | Start | Finish | Complete | Remaining | Actual start | Constraint | Resources | Work | Actual work | Cost | Actual cost |
| --- | --- | --- | --- | --- | --- | --- | --- | --- | --- | --- | --- | --- | --- | --- | --- |
| 60 | 1.6.3 | **Programacion de GUI** |  | 20d | 2012-06-19 | 2012-07-16 | 10% | 18d | 2012-06-29 |  |  | 160h | 16h | 8,000 | 800 |
| 61 | 1.6.3.1 | prog. pantalla principal | manual | 2d | 2012-07-02 | 2012-07-03 |  |  |  |  | Jared Bustamante | 16h |  | 800 |  |
| 62 | 1.6.3.2 | prog.pantalla principal del administrador | manual | 2d | 2012-06-29 | 2012-07-02 |  |  |  |  | José Rodolfo Sánchez | 16h |  | 800 |  |
| 63 | 1.6.3.3 | prog.datos de participante | manual | 2d | 2012-07-12 | 2012-07-13 |  |  |  |  | José Juan Duarte | 16h |  | 800 |  |
| 64 | 1.6.3.4 | prog.generador de cartas de recomendación | manual | 2d | 2012-07-04 A | 2012-07-05 | 75% | 0.5d |  |  | Jared Bustamante | 16h | 12h | 800 | 600 |
| 65 | 1.6.3.5 | prog.catalogo de servicios | manual | 2d | 2012-07-30 | 2012-07-31 |  |  |  |  | Jared Bustamante | 16h |  | 800 |  |
| 66 | 1.6.3.6 | prog.catálogo de asesores | manual | 2d | 2012-07-06 | 2012-07-09 |  |  |  |  | Jared Bustamante | 16h |  | 800 |  |
| 67 | 1.6.3.7 | prog.catalogo de alumnos | manual | 2d | 2012-07-09 | 2012-07-10 |  |  |  |  | José Rodolfo Sánchez | 16h |  | 800 |  |
| 68 | 1.6.3.8 | prog.pantalla de información de facturación | manual | 2d | 2012-07-03 | 2012-07-04 |  |  |  |  | José Rodolfo Sánchez | 16h |  | 800 |  |
| 69 | 1.6.3.9 | prog.control nutrimental del participante | manual | 2d | 2012-07-30 | 2012-07-31 |  |  |  |  | José Juan Duarte | 16h |  | 800 |  |
| 70 | 1.6.3.10 | prog.listado de fechas importantes | manual | 2d | 2012-07-05 A | 2012-07-06 | 25% | 1.5d |  |  | José Rodolfo Sánchez | 16h | 4h | 800 | 200 |
| 71 | 1.6.4 | **PRUEBAS** |  | 7d | 2012-07-04 | 2012-07-12 |  |  |  |  |  | 39.76h |  | 1,988 |  |
| 72 | 1.6.4.1 | pruebas de validación | manual | 3d | 2012-08-03 | 2012-08-07 |  |  |  | start no earlier than 2012-07-10 | José Rodolfo Sánchez [33%]; Jared Bustamante [33%]; José Juan Duarte [33%] | 23.76h |  | 1,188 |  |
| 73 | 1.6.4.2 | pruebas de requerimientos | manual | 2d | 2012-08-01 | 2012-08-02 |  |  |  | start no earlier than 2012-05-30 | Jared Bustamante | 16h |  | 800 |  |
| 74 | 1.6.5 | **IMPLEMENTACIÓN** |  | 20d | 2012-06-19 A | 2012-07-16 |  | 20d |  |  |  | 56h |  | 2,800 |  |
| 75 | 1.6.5.1 | plan de implementación | manual | 4d | 2012-07-10 | 2012-07-13 |  |  |  | start no earlier than 2012-07-09 | Jared Bustamante | 32h |  | 1,600 |  |
| 76 | 1.6.5.2 | manual de usuario | manual | 3d | 2012-06-19 A | 2012-07-13 |  | 3d |  | start no earlier than 2012-05-30 | José Rodolfo Sánchez | 24h |  | 1,200 |  |
